# Knjižnica

Schedule from MS Project, 2020-06-01 to 2020-09-02, status date 2020-07-27, costs in kn, A marks actual dates.
Ovo je postupak izgradnje aplikacije koja omogućuje studentima posudbu i kupnju literature koja im je potrebna.

## Calendars

- Standard: Mon-Fri 08:00-12:00, 13:00-17:00; Sat-Sun off. Exceptions (off unless hours are given): 2020-06-11 (Tijelovo), 2020-06-22 (Dan antifašističke borbe), 2020-08-05 (Dan pobjede), 2020-08-15 (Velika Gospa).

## Resources

| Resource | Group | Rate |
| --- | --- | --- |
| Pam | Frontend | 75 |
| Jim | Frontend | 150 |
| Dwight | Backend | 180 |
| Stanley | Backend | 100 |
| Phyllis | Frontend | 80 |
| Michael | Manager | 70 |
| Angela | Testing | 60 |
| Kevin | Testing | 60 |
| Oscar | Testing | 70 |
| Creed | Quality Assurance | 40 |
| Meredith | Supplier relations | 40 |
| Kelly | CSS | 40 |
| Toby | CSS | 40 |
| Ryan | Intern | 25 |
| Andy | Backend | 80 |
| Darryl | Terenski rad | 100 |
| David | CEO | 500 |
| Računala | Hardver | 5000 |
| Tableti | Hardver | 1000 |
| Licence za bazu podataka | Softver |  |
| Licenca Algoritam | Licence |  |
| Licenca Školska Knjiga | Licence |  |
| Licenca Profil | Licence |  |
| Licenca za WinOS | Softver |  |
| Karen | Frontend | 70 |
| Pete | Intern | 40 |
| Clark | Intern | 40 |

## Schedule

| ID | WBS | Task | Type | Duration | Start | Finish | Predecessors | Complete | Baseline start | Baseline finish | Baseline duration | Deadline | Resources | Work | Actual work | Cost | Baseline cost | Actual cost |
| --- | --- | --- | --- | --- | --- | --- | --- | --- | --- | --- | --- | --- | --- | --- | --- | --- | --- | --- |
| 1 | 1 | **Inicijalizacija** |  | 3.5d | 2020-06-01 08:00 A | 2020-06-04 12:00 A |  | 100% | 2020-06-01 08:00 | 2020-06-04 17:00 | 4d |  |  | 65.12h | 65.12h | 9,294.4 | 10,768 | 9,294.4 |
| 2 | 1.1 | Odrediti ciljeve |  | 0.5d | 2020-06-01 08:00 A | 2020-06-01 12:00 A |  | 100% | 2020-06-01 08:00 | 2020-06-01 12:00 | 0.5d |  | David; Michael | 8h | 8h | 2,280 | 2,280 | 2,280 |
| 3 | 1.2 | Odrediti strategiju za razvoj aplikacije |  | 0.5d | 2020-06-01 13:00 A | 2020-06-01 17:00 A | 2 | 100% | 2020-06-01 13:00 | 2020-06-01 17:00 | 0.5d |  | David; Michael | 8h | 8h | 2,280 | 2,280 | 2,280 |
| 4 | 1.3 | Pronaći slične aplikacije |  | 0.5d | 2020-06-02 08:00 A | 2020-06-02 12:00 A | 3 | 100% | 2020-06-02 08:00 | 2020-06-02 12:00 | 0.5d |  | Michael [50%] | 2h | 2h | 140 | 140 | 140 |
| 5 | 1.4 | Smisliti ime aplikacije |  | 0.3d | 2020-06-02 08:00 A | 2020-06-02 10:24 A | 3 | 100% | 2020-06-02 08:00 | 2020-06-02 12:00 | 0.5d |  | David; Michael [50%] | 3.6h | 3.6h | 1,284 | 2,140 | 1,284 |
| 6 | 1.5 | Napraviti konceptni dokument |  | 0.5d | 2020-06-02 13:00 A | 2020-06-02 17:00 A | 5 | 100% | 2020-06-02 13:00 | 2020-06-02 17:00 | 0.5d |  | Michael; Pam | 8h | 8h | 580 | 580 | 580 |
| 7 | 1.6 | Odrediti budžet |  | 0.5d | 2020-06-03 08:00 A | 2020-06-03 12:00 A | 6 | 100% | 2020-06-03 08:00 | 2020-06-03 12:00 | 0.5d |  | Angela; Michael [20%] | 4.8h | 4.8h | 296 | 296 | 296 |
| 8 | 1.7 | Odrediti obim |  | 0.7d | 2020-06-03 08:00 A | 2020-06-03 14:36 A | 6 | 100% | 2020-06-03 08:00 | 2020-06-03 12:00 | 0.5d |  | Dwight; Michael [20%] | 6.72h | 6.72h | 1,086.4 | 776 | 1,086.4 |
| 9 | 1.8 | Odrediti glavne dionike |  | 0.5d | 2020-06-03 08:00 A | 2020-06-03 12:00 A | 6 | 100% | 2020-06-03 08:00 | 2020-06-03 12:00 | 0.5d |  | Meredith; Michael [20%]; Creed; Kelly | 12.8h | 12.8h | 536 | 536 | 536 |
| 10 | 1.9 | Napraviti SOW |  | 0.2d | 2020-06-03 08:00 A | 2020-06-03 09:36 A | 7, 8 | 100% | 2020-06-03 13:00 | 2020-06-03 17:00 | 0.5d |  | Michael; Pam | 3.2h | 3.2h | 232 | 580 | 232 |
| 11 | 1.10 | Napraviti Projekni charter |  | 0.5d | 2020-06-04 08:00 A | 2020-06-04 12:00 A | 10 | 100% | 2020-06-04 08:00 | 2020-06-04 17:00 | 1d |  | Michael; Pam | 8h | 8h | 580 | 1,160 | 580 |
| 12 | 1.11 | Kraj Inicijalizacije | milestone | 0d | 2020-06-04 12:00 A | 2020-06-04 12:00 A | 11 | 100% | 2020-06-04 17:00 | 2020-06-04 17:00 | 0d |  |  |  |  |  |  |  |
| 13 | 2 | **Planiranje** |  | 14d | 2020-06-04 08:00 A | 2020-06-25 17:00 A | 12 | 100% | 2020-06-05 08:00 | 2020-06-26 17:00 | 14d | 2020-06-28 17:00 |  | 140h | 140h | 10,024 | 9,064 | 10,024 |
| 14 | 2.1 | **Setup** |  | 1.5d | 2020-06-04 08:00 A | 2020-06-05 12:00 A |  | 100% | 2020-06-05 08:00 | 2020-06-08 17:00 | 2d |  |  | 20.8h | 20.8h | 1,680 | 2,344 | 1,680 |
| 15 | 2.1.1 | Popis potrebnog hardvera |  | 0.7d | 2020-06-04 08:00 A | 2020-06-04 14:36 A |  | 100% | 2020-06-05 08:00 | 2020-06-05 17:00 | 1d |  | Creed; Michael [30%] | 7.28h | 7.28h | 341.6 | 488 | 341.6 |
| 16 | 2.1.2 | Popis potrebnog softvera |  | 0.8d | 2020-06-04 08:00 A | 2020-06-04 15:24 A | 15SS | 100% | 2020-06-05 08:00 | 2020-06-05 17:00 | 1d |  | Jim; Michael [30%] | 8.32h | 8.32h | 1,094.4 | 1,368 | 1,094.4 |
| 17 | 2.1.3 | Popis potrebnih licenca |  | 0.5d | 2020-06-05 08:00 A | 2020-06-05 12:00 A | 16 | 100% | 2020-06-08 08:00 | 2020-06-08 17:00 | 1d |  | Meredith; Michael [30%] | 5.2h | 5.2h | 244 | 488 | 244 |
| 18 | 2.1.4 | Potrebna oprema popisana | milestone | 0d | 2020-06-05 12:00 A | 2020-06-05 12:00 A | 17 | 100% | 2020-06-08 17:00 | 2020-06-08 17:00 | 0d |  |  |  |  |  |  |  |
| 19 | 2.2 | **Plan za razvoj** |  | 5.1d | 2020-06-05 08:00 A | 2020-06-15 08:48 A | 14 | 100% | 2020-06-09 08:00 | 2020-06-17 17:00 | 6d |  |  | 47.2h | 47.2h | 3,304 | 3,360 | 3,304 |
| 20 | 2.2.1 | Detaljno razraditi obim |  | 0.5d | 2020-06-05 08:00 A | 2020-06-05 12:00 A |  | 100% | 2020-06-09 08:00 | 2020-06-09 17:00 | 1d |  | Michael | 4h | 4h | 280 | 560 | 280 |
| 21 | 2.2.2 | Stvoriti detaljan WBS |  | 2.5d | 2020-06-05 08:00 A | 2020-06-09 12:00 A | 20 | 100% | 2020-06-10 08:00 | 2020-06-12 17:00 | 2d |  | Michael | 20h | 20h | 1,400 | 1,120 | 1,400 |
| 22 | 2.2.3 | Odrediti potrebne resurse |  | 2.3d | 2020-06-09 08:00 A | 2020-06-12 10:24 A | 21 | 100% | 2020-06-15 08:00 | 2020-06-16 17:00 | 2d |  | Michael | 18.4h | 18.4h | 1,288 | 1,120 | 1,288 |
| 23 | 2.2.4 | Odrediti veze među aktivnostima |  | 0.6d | 2020-06-12 13:00 A | 2020-06-15 08:48 A | 22 | 100% | 2020-06-17 08:00 | 2020-06-17 17:00 | 1d |  | Michael | 4.8h | 4.8h | 336 | 560 | 336 |
| 24 | 2.3 | **Planiranje rizika** |  | 3.2d | 2020-06-15 08:00 A | 2020-06-18 09:36 A | 19 | 100% | 2020-06-18 08:00 | 2020-06-23 17:00 | 3d |  |  | 32h | 32h | 2,240 | 1,680 | 2,240 |
| 25 | 2.3.1 | Odrediti rizike |  | 0.8d | 2020-06-15 08:00 A | 2020-06-15 15:24 A |  | 100% | 2020-06-18 08:00 | 2020-06-18 17:00 | 1d |  | Michael | 6.4h | 6.4h | 448 | 560 | 448 |
| 26 | 2.3.2 | Analizirati rizike |  | 2d | 2020-06-15 08:00 A | 2020-06-16 17:00 A | 25 | 100% | 2020-06-19 08:00 | 2020-06-19 17:00 | 1d |  | Michael | 16h | 16h | 1,120 | 560 | 1,120 |
| 27 | 2.3.3 | Stvoriti plan za upravljanje rizicima |  | 1.2d | 2020-06-17 08:00 A | 2020-06-18 09:36 A | 26 | 100% | 2020-06-23 08:00 | 2020-06-23 17:00 | 1d |  | Michael | 9.6h | 9.6h | 672 | 560 | 672 |

Notes:
- 1: Faza inicijalizacije služi za otvaranje projekta. Tu definiramo ciljeve i strategiju prilikom izrade aplikacije knjižnice.
- 2: Određujemo što želimo postići pravljenjem ove aplikacije.
- 3: Pravimo strategiju koja će nam pomoći kod izrade aplikacije knjižnica.
- 4: Pronalazak sličnih aplikacija će nam pomoći u grubim početnim procjenama obima i budžeta.
- 5: Dogovara se kako nazvati aplikaciju.
- 6: Pravljenje konceptnog dokumenta, odnosno dokumenta koji nam ukratko kaže što ćemo napraviti.
- 7: Ugrubo procijenjujemo budžet da bi ga mogli prezentirat na projektnom charteru.
- 8: Isto kao i za budžet.
- 9: Isto kao i za prethodna dva, ali sad već znamo što nam je otprilike potrebno, tako da znamo kako najbolje ugrubo odrediti dionike.
- 10: Stvaramo SOW da bi opisali posao koji planiramo napraviti te što želimo kao ishod.
- 11: Skupljamo sve što smo napravili u fazi inicijalizacije da bi dobili službeni dokument projekta zvan projektnim charterom.
- 12: Ovo je prvi milestone u projektu i obilježava kraj faze inicijalizacije.
- 13: U fazi planiranja definiramo "korake" koji će nam omogućiti da programiranje aplikacije "lakše teče".
- 14: U setup podfazi planiranja nabavljamo sve što će nam biti potrebno za programiranje aplikacije knjižnice.
- 15: Popisujemo koliko i koja računala i tablete će biti postavljeno u knjižnici fakulteta. To je za studente koji ne mogu učiti od doma ili im je prikladnije što se tiče rasporeda.
- 16: Popisujemo sav softver koji će biti potreban da bismo koristili našu aplikaciju.
- 17: Popisujemo licence različitih izdavačkih kuća koje moramo nabaviti da bismo mogli koristiti njihov sadržaj (primjerice licencu koja nam omogućuje da u bazu podataka za posudbu ubacimo knjige od Profila)
- 18: Milestone za popisanu potrebnu opremu (softver, hardver i licence)
- 19: Planiramo kako će teći razvoj aplikacije, odnosno definiramo koje ćemo korake napravit da bismo efikasno izgradili knižnicu.
- 20: "Razbijamo" obim na manje dijelove kako bismo mogli izgraditi WBS.
- 21: Detaljno dijelimo posao kako bismo ga kasnije lakše mogli pratiti.
- 22: Sad kada imamo razdijeljene poslove možemo im pridijeliti resurse, u slučaju da ih nemamo dovoljno možda ćemo morati outsourcati dio posla.
- 23: Određujemo veze među aktivnostima te tako dobivamo vremenski plan kako će teći programiranje naše aplikacije.
- 24: U ovoj fazi identificiramo i analiziramo rizike. Također pripremamo se kako pristupiti rješavanju kod tih rizika.
- 25: Na početku praktično nabrajamo rizike koji nam se mogu dogoditi.
- 26: Analiziramo kako će rizici utjecati na razvoj projekta.
- 27: Planiramo kako se nositi sa određenim rizicima.

| ID | WBS | Task | Type | Duration | Start | Finish | Predecessors | Complete | Remaining | Baseline start | Baseline finish | Baseline duration | Total slack | Free slack | Deadline | Resources | Work | Actual work | Cost | Baseline cost | Actual cost |
| --- | --- | --- | --- | --- | --- | --- | --- | --- | --- | --- | --- | --- | --- | --- | --- | --- | --- | --- | --- | --- | --- |
| 28 | 2.4 | **Plan za kvalitetu** |  | 5d | 2020-06-18 08:00 A | 2020-06-25 17:00 A | 24 | 100% |  | 2020-06-24 08:00 | 2020-06-26 17:00 | 3d |  |  |  |  | 40h | 40h | 2,800 | 1,680 | 2,800 |
| 29 | 2.4.1 | Odrediti zahtjeve za kvalitetu |  | 4d | 2020-06-18 08:00 A | 2020-06-24 17:00 A |  | 100% |  | 2020-06-24 08:00 | 2020-06-25 17:00 | 2d |  |  |  | Michael | 32h | 32h | 2,240 | 1,120 | 2,240 |
| 30 | 2.4.2 | Stvoriti plan za upravljanje kvalitetom |  | 1d | 2020-06-25 08:00 A | 2020-06-25 17:00 A | 29 | 100% |  | 2020-06-26 08:00 | 2020-06-26 17:00 | 1d |  |  |  | Michael | 8h | 8h | 560 | 560 | 560 |
| 31 | 2.5 | Kraj planiranja | milestone | 0d | 2020-06-25 17:00 A | 2020-06-25 17:00 A | 28 | 100% |  | 2020-06-26 17:00 | 2020-06-26 17:00 | 0d |  |  |  |  |  |  |  |  |  |
| 32 | 3 | **Egzekucija** |  | 43.71d | 2020-06-26 08:00 A | 2020-08-27 14:40 | 28 | 64% | 15.57d | 2020-06-29 08:00 | 2020-08-25 17:00 | 41d | -1.71d | 0d | 2020-08-28 17:00 |  | 1668.2h | 984.2h | 207,606.98 | 209,288 | 148,617.98 |
| 33 | 3.1 | **Nabava I priprema** |  | 7d | 2020-06-26 08:00 A | 2020-07-06 17:00 A |  | 100% |  | 2020-06-29 08:00 | 2020-07-03 17:00 | 5d |  |  |  |  | 103.2h | 103.2h | 82,088 | 81,320 | 66,088 |
| 34 | 3.1.1 | Nabava hardvera |  | 2d | 2020-06-26 08:00 A | 2020-06-29 17:00 A |  | 100% |  | 2020-06-29 08:00 | 2020-06-29 17:00 | 1d |  |  |  | Računala [800%]; Tableti [2000%]; Darryl | 16h | 16h | 61,600 | 60,800 | 61,600 |
| 35 | 3.1.2 | Nabava softvera |  | 0.6d | 2020-06-29 08:00 A | 2020-06-29 13:48 A | 34SS | 100% |  | 2020-06-29 08:00 | 2020-06-29 17:00 | 1d |  |  |  | Meredith [50%]; Licence za bazu podataka [10%]; Licenca za WinOS [2.5%] | 2.4h | 2.4h | 10,096 | 10,160 | 96 |
| 36 | 3.1.3 | Nabava licenci |  | 1.2d | 2020-06-29 08:00 A | 2020-06-30 09:36 A | 35SS | 100% |  | 2020-06-29 08:00 | 2020-06-29 17:00 | 1d |  |  |  | Meredith [50%]; Licenca Algoritam [0.1%]; Licenca Školska Knjiga [0.1%]; Licenca Profil [0.1%] | 4.8h | 4.8h | 6,192 | 6,160 | 192 |
| 37 | 3.1.4 | Unos podataka u bazu |  | 1w | 2020-06-30 08:00 A | 2020-07-06 17:00 A | 36FS-1d | 100% |  | 2020-06-29 08:00 | 2020-07-03 17:00 | 1w |  |  |  | Ryan; Andy | 80h | 80h | 4,200 | 4,200 | 4,200 |
| 38 | 3.2 | **Kodiranje frontenda** |  | 30.71d | 2020-07-07 08:00 A | 2020-08-19 14:40 | 33 | 61% | 11.92d | 2020-07-06 08:00 | 2020-08-17 17:00 | 30d | -1.71d | 0d | 2020-08-19 17:00 |  | 875.2h | 472.2h | 63,840.98 | 62,600 | 38,985.98 |
| 39 | 3.2.1 | **HTML** |  | 22.71d | 2020-07-07 08:00 A | 2020-08-07 14:40 |  | 78% | 5.03d | 2020-07-06 08:00 | 2020-07-31 17:00 | 20d | -1.71d | 0d |  |  | 208.2h | 171.2h | 13,861 | 12,360 | 11,346 |
| 40 | 3.2.1.1 | Stranica za registraciju korisnika |  | 0.8d | 2020-07-07 08:00 A | 2020-07-07 15:24 A |  | 100% |  | 2020-07-06 08:00 | 2020-07-06 17:00 | 1d |  |  |  | Phyllis | 6.4h | 6.4h | 512 | 640 | 512 |
| 41 | 3.2.1.2 | Stranica za login korisnika |  | 0.6d | 2020-07-08 08:00 A | 2020-07-08 13:48 A | 40 | 100% |  | 2020-07-07 08:00 | 2020-07-07 17:00 | 1d |  |  |  | Phyllis | 4.8h | 4.8h | 384 | 640 | 384 |
| 42 | 3.2.1.3 | Naslovna stranica |  | 3d | 2020-07-07 08:00 A | 2020-07-09 17:00 A | 41 | 100% |  | 2020-07-08 08:00 | 2020-07-10 17:00 | 3d |  |  |  | Pam | 24h | 24h | 1,800 | 1,800 | 1,800 |
| 43 | 3.2.1.4 | Stranica korisničkog profila |  | 1.5d | 2020-07-13 08:00 A | 2020-07-14 12:00 A | 42FS+1d | 100% |  | 2020-07-14 08:00 | 2020-07-15 17:00 | 2d |  |  |  | Phyllis | 12h | 12h | 960 | 1,280 | 960 |
| 44 | 3.2.1.5 | Stranica za posudbe |  | 5.5d | 2020-07-14 08:00 A | 2020-07-21 12:00 A | 43 | 100% |  | 2020-07-16 08:00 | 2020-07-20 17:00 | 3d |  |  |  | Pam [50%]; Ryan [50%] | 33h | 33h | 1,815 | 1,260 | 1,815 |
| 45 | 3.2.1.6 | Stranica za kupnju |  | 5.5d | 2020-07-16 08:00 A | 2020-07-23 12:00 A | 44FS-2d | 100% |  | 2020-07-17 08:00 | 2020-07-22 17:00 | 4d |  |  |  | Pam [50%]; Ryan [50%] | 44h | 44h | 2,410 | 1,780 | 2,410 |
| 46 | 3.2.1.7 | Stranica određene knjige ili časopisa |  | 8.33d | 2020-07-22 13:00 A | 2020-08-03 15:40 | 45FS-1d | 39% | 5.05d | 2020-07-22 08:00 | 2020-07-28 17:00 | 5d | 0d |  |  | Phyllis; Pam [30%]; Karen [30%] | 72h | 42h | 5,680 | 4,760 | 3,340 |
| 47 | 3.2.1.8 | Stranica sa postavkama |  | 1.5d | 2020-07-31 13:00 A | 2020-08-07 14:40 | 46FS+2d | 42% | 0.88d | 2020-07-31 08:00 | 2020-07-31 17:00 | 1d | -1.71d | 0d |  | Ryan | 12h | 5h | 300 | 200 | 125 |
| 48 | 3.2.2 | JS |  | 20.21d | 2020-07-07 08:00 A | 2020-08-04 09:42 | 39SS | 69% | 6.19d | 2020-07-06 08:00 | 2020-07-31 17:00 | 20d | -1.21d | 0d |  | Jim; Karen [70%]; Clark [50%]; Pete [48.2%] | 427h | 301h | 37,979.98 | 38,240 | 27,639.98 |
| 49 | 3.2.3 | CSS |  | 2w | 2020-08-04 14:40 | 2020-08-19 14:40 | 39FS-2d, 48 |  |  | 2020-08-03 08:00 | 2020-08-17 17:00 | 2w | -1.71d | 0d |  | Kelly; Toby; Karen | 240h |  | 12,000 | 12,000 |  |
| 50 | 3.3 | **Kodiranje backenda** |  | 24.75d | 2020-07-07 08:00 A | 2020-08-11 15:00 | 33 | 78% | 5.39d | 2020-07-06 08:00 | 2020-08-13 17:00 | 28d | 3.25d |  | 2020-08-14 17:00 |  | 517h | 408.8h | 52,420 | 53,000 | 43,544 |
| 51 | 3.3.1 | **PHP** |  | 24.75d | 2020-07-07 08:00 A | 2020-08-11 15:00 | 38SS | 78% | 5.39d | 2020-07-06 08:00 | 2020-08-13 17:00 | 28d | 3.25d |  |  |  | 517h | 408.8h | 52,420 | 53,000 | 43,544 |
| 52 | 3.3.1.1 | Klasa Korisnik |  | 2.55w | 2020-07-07 08:00 A | 2020-07-24 15:00 A |  | 100% |  | 2020-07-06 08:00 | 2020-07-20 17:00 | 2w |  |  |  | Dwight [25%]; Pete [50%]; Stanley [20%] | 93h | 93h | 8,160 | 6,800 | 8,160 |
| 53 | 3.3.1.2 | Klasa Knjiga |  | 3.5w | 2020-07-08 08:00 A | 2020-08-03 12:00 | 52SS+1d | 69% | 1.1w | 2020-07-07 08:00 | 2020-07-29 17:00 | 3w | 8.5d | 0d |  | Dwight [25%]; Clark [50%]; Andy [50%] | 162h | 120h | 13,980 | 12,600 | 11,660 |
| 54 | 3.3.1.3 | Klasa za serviranje |  | 4.15w | 2020-07-13 08:00 A | 2020-08-11 15:00 | 53SS+3d | 73% | 1.12w | 2020-07-10 08:00 | 2020-08-13 17:00 | 4w | 3.25d |  |  | Dwight [50%]; Andy [50%]; Stanley [80%] | 262h | 195.8h | 30,280 | 33,600 | 23,724 |
| 55 | 3.4 | Refaktoriranje koda |  | 4d | 2020-07-31 14:40 | 2020-08-07 14:40 | 49SS-2d |  |  | 2020-07-30 08:00 | 2020-08-04 17:00 | 4d | 1.79d |  |  | Pam; Phyllis | 64h |  | 3,880 | 5,440 |  |
| 56 | 3.5 | Kraj kodiranja | milestone | 0d | 2020-08-19 14:40 | 2020-08-19 14:40 | 55, 49, 50 |  |  | 2020-08-17 17:00 | 2020-08-17 17:00 | 0d | 4.29d |  |  |  |  |  |  |  |  |

Notes:
- 28: Stvaramo plan za kvalitetu, odnosno pripremamo se da bismo zadovoljili sve zahtjeve koje bi korisnici mogli imati.
- 29: Popisujemo značajke koje bi naša aplikacija trebala imati.
- 30: Stvaramo plan kako ostvariti zahtjeve, a da studenti budu zadovoljni.
- 31: Ovaj milestone predstavlja kraj faze planiranja, isplanirali smo kako bi aplikacija trebala funkcionirati i koji su rizici. Pomoću dokumenata dobivenih u ovoj fazi nastavljamo s razvojem.
- 32: Instalacija i programiranje.
- 33: U ovoj fazi nabavljamo potreban hardver, softver i licence koje smo popisali ranije.
- 34: Nabavljamo računala i tablete koji će biti postavljeni na faksu.
- 35: Nabavljamo licence za bazu podataka i OS.
- 36: Nabavljamo licence koje nam omogućuju da koristimo intelektualno vlasništvo izdavačkih kuća.
- 37: Unosimo podatke u bazu, možemo počet nešto ranije jer prvo unosimo one knjige i časopise za koje ne trebamo licence.
- 38: Tu se bavimo kodiranjem frontenda.
- 39: Ovdje su opisani podzadaci vezani uz html
- 40: Pravimo stranicu za registraciju korisnika u aplikaciju knižnica.
- 41: Nakon što smo omogućili registraciju omogućujemo i login.
- 42: Ovdje radimo naslovnu stranicu, odnosno onu koja se otvara nakon logina. Na njoj je najviše informacija.
- 43: Radimo stranicu korisničkog profila, tu on može stavljat slike te vidjet koje knjige je posudio ili nabavio.
- 44: Nakon što smo napravili korisničku stranicu dodajemo mogućnosti posudbe knjige.
- 45: Ovdje je vrlo slično samo za kupnju pa možemo ranije početi, razlika od posudbe je što treba omogućiti plaćanje.
- 46: Ovo je stranica koja sadrži najviše informacija, primjerice žanr, korisničke komentare, kratki opis, preporuke i slično.
- 47: Ovo je najjednostavnija stranica, omogućuje klasične postavke poput promjene u Dark theme, promjene passworda, jezika ...
- 48: Ovo je najvažniji dio koda na frontendu, omogućuje komunikaciju sa backend stranom i dodje razne opcije ovisno o situacijama.
- 49: Nakon što je kodiranje završeno možemo početi s uređivanjem stranice.
- 50: Ovdje je opisano kodiranje osnovnih klasa na backend strani.
- 51: PHP je jezik u kojem radimo aplikaciju.
- 52: Korisnik je osnovna klasa, omogućuje dohvaćanje podataka o korisniku (username, password, posudene knjige...)
- 53: Klasa Knjiga je u vezi SS s klasom Korisnik s tim da ipak počinje 2 dana kasnije (nakon što se obave osnovne operacije za korisnika tipa registracija i prijave.
- 54: Ovo je klasa koja omogućuje pozivanje raznih metoda i komunikaciju s frontendom, to je praktično najvažnija klasa na backendu.
- 55: Ovdje samo malo uređujemo kod kako bismo omogućili lakše održavanje aplikacije u budućnosti.
- 56: Ovaj milestone označava da je aplikacija iskodirana, odnosno aplikacija je završena.

| ID | WBS | Task | Type | Duration | Start | Finish | Predecessors | Complete | Baseline start | Baseline finish | Baseline duration | Total slack | Free slack | Constraint | Deadline | Resources | Work | Actual work | Cost | Baseline cost | Actual cost |
| --- | --- | --- | --- | --- | --- | --- | --- | --- | --- | --- | --- | --- | --- | --- | --- | --- | --- | --- | --- | --- | --- |
| 57 | 3.6 | **Testiranje** |  | 6d | 2020-08-19 14:40 | 2020-08-27 14:40 | 49, 50, 55 |  | 2020-08-18 08:00 | 2020-08-25 17:00 | 6d | -1.71d | 0d |  | 2020-08-28 17:00 |  | 108.8h |  | 5,378 | 6,928 |  |
| 58 | 3.6.1 | Test posuđivanja I nabave |  | 3d | 2020-08-19 14:40 | 2020-08-24 14:40 |  |  | 2020-08-18 08:00 | 2020-08-20 17:00 | 3d | -1.71d | 0d |  |  | Angela; Kevin [60%] | 38.4h |  | 1,854 | 2,304 |  |
| 59 | 3.6.2 | Test sortiranja I kategorizacije |  | 3d | 2020-08-19 14:40 | 2020-08-24 14:40 | 58SS |  | 2020-08-18 08:00 | 2020-08-20 17:00 | 3d | -1.71d | 0d |  |  | Oscar; Kevin [40%] | 33.6h |  | 1,746 | 2,256 |  |
| 60 | 3.6.3 | Test ažuriranja |  | 1d | 2020-08-24 14:40 | 2020-08-25 14:40 | 59, 58 |  | 2020-08-21 08:00 | 2020-08-21 17:00 | 1d | -1.71d | 0d |  |  | Angela | 8h |  | 280 | 480 |  |
| 61 | 3.6.4 | Testiranje aplikacije |  | 2d | 2020-08-25 14:40 | 2020-08-27 14:40 | 60 |  | 2020-08-24 08:00 | 2020-08-25 17:00 | 2d | -1.71d | 0d |  |  | Angela [80%]; Oscar | 28.8h |  | 1,498 | 1,888 |  |
| 62 | 3.7 | Kraj testiranja | milestone | 0d | 2020-08-27 14:40 | 2020-08-27 14:40 | 57 |  | 2020-08-25 17:00 | 2020-08-25 17:00 | 0d | -1.71d | 0d |  |  |  |  |  |  |  |  |
| 63 | 4 | **Kontrola** |  | 3d | 2020-08-27 14:40 | 2020-09-01 14:40 | 32 |  | 2020-08-26 08:00 | 2020-08-28 17:00 | 3d | -1.71d | 0d |  | 2020-08-30 17:00 |  | 44h |  | 2,730 | 2,730 |  |
| 64 | 4.1 | Kontrola obima |  | 1d | 2020-08-27 14:40 | 2020-08-28 14:40 |  |  | 2020-08-26 08:00 | 2020-08-26 17:00 | 1d | -1.71d | 0d |  |  | Michael [50%]; Creed | 12h |  | 642 | 642 |  |
| 65 | 4.2 | Kontrola rasporeda |  | 1d | 2020-08-27 14:40 | 2020-08-28 14:40 | 64SS |  | 2020-08-26 08:00 | 2020-08-26 17:00 | 1d | -1.71d | 0d |  |  | Angela; Michael [50%] | 12h |  | 802 | 802 |  |
| 66 | 4.3 | Kontrola kvalitete |  | 1d | 2020-08-28 14:40 | 2020-08-31 14:40 | 65, 64 |  | 2020-08-27 08:00 | 2020-08-27 17:00 | 1d | -1.71d | 0d |  |  | Michael [50%]; Creed | 12h |  | 642 | 642 |  |
| 67 | 4.4 | Praćenje I kontrola rizicima |  | 1d | 2020-08-31 14:40 | 2020-09-01 14:40 | 66 |  | 2020-08-28 08:00 | 2020-08-28 17:00 | 1d | -1.71d | 0d |  |  | Michael | 8h |  | 644 | 644 |  |
| 68 | 4.5 | Kraj kontrole | milestone | 0d | 2020-09-01 14:40 | 2020-09-01 14:40 | 67 |  | 2020-08-28 17:00 | 2020-08-28 17:00 | 0d | -1.71d | 0d |  |  |  |  |  |  |  |  |
| 69 | 5 | **Zatvaranje** |  | 1d | 2020-09-01 14:40 | 2020-09-02 14:40 | 63 |  | 2020-08-31 08:00 | 2020-08-31 17:00 | 1d | -1.71d | 0d |  | 2020-08-31 17:00 |  | 33.6h |  | 2,348 | 2,348 |  |
| 70 | 5.1 | Projektni izvještaj |  | 1d | 2020-09-01 14:40 | 2020-09-02 14:40 |  |  | 2020-08-31 08:00 | 2020-08-31 17:00 | 1d | -1.71d | 0d |  |  | Michael; Pam [20%] | 9.6h |  | 788 | 788 |  |
| 71 | 5.2 | Isporuka aplikacije |  | 1d | 2020-09-01 14:40 | 2020-09-02 14:40 | 70SS |  | 2020-08-31 08:00 | 2020-08-31 17:00 | 1d | -1.71d | 0d |  |  | Darryl; Toby; Ryan | 24h |  | 1,560 | 1,560 |  |
| 72 | 5.3 | Kraj projekta | milestone | 0d | 2020-09-02 14:40 | 2020-09-02 14:40 | 70, 71 |  | 2020-08-31 17:00 | 2020-08-31 17:00 | 0d | -1.71d | 0d |  |  |  |  |  |  |  |  |
| 73 | 6 | **Sastanci** |  | 43.12d | 2020-06-02 08:00 A | 2020-08-04 09:00 A |  | 100% | 2020-06-02 08:00 | 2020-08-04 09:00 | 43.12d |  |  |  |  |  | 38.7h | 38.7h | 3,088.5 | 3,088.5 | 3,088.5 |
| 74 | 6.1 | Sastanci 1 |  | 1h | 2020-06-02 08:00 A | 2020-06-02 09:00 A |  | 100% | 2020-06-02 08:00 | 2020-06-02 09:00 | 1h |  |  | start no earlier than 2020-06-02 08:00 |  | Pam; Angela; Karen; Phyllis | 4h | 4h | 285 | 285 | 285 |
| 75 | 6.2 | Sastanci 2 |  | 1h | 2020-06-09 08:00 A | 2020-06-09 09:00 A |  | 100% | 2020-06-09 08:00 | 2020-06-09 09:00 | 1h |  |  | start no earlier than 2020-06-09 08:00 |  | Pam; Angela; Phyllis; Karen | 4h | 4h | 285 | 285 | 285 |
| 76 | 6.3 | Sastanci 3 |  | 1h | 2020-06-16 08:00 A | 2020-06-16 09:00 A |  | 100% | 2020-06-16 08:00 | 2020-06-16 09:00 | 1h |  |  | start no earlier than 2020-06-16 08:00 |  | Pam; Phyllis; Angela; Karen | 4h | 4h | 285 | 285 | 285 |
| 77 | 6.4 | Sastanci 4 |  | 1h | 2020-06-23 08:00 A | 2020-06-23 09:00 A |  | 100% | 2020-06-23 08:00 | 2020-06-23 09:00 | 1h |  |  | start no earlier than 2020-06-23 08:00 |  | Pam; Phyllis; Karen; Angela | 4h | 4h | 285 | 285 | 285 |
| 78 | 6.5 | Sastanci 5 |  | 1h | 2020-06-30 08:00 A | 2020-06-30 09:00 A |  | 100% | 2020-06-30 08:00 | 2020-06-30 09:00 | 1h |  |  | start no earlier than 2020-06-30 08:00 |  | Pam; Phyllis; Angela; Karen | 4h | 4h | 285 | 285 | 285 |
| 79 | 6.6 | Sastanci 6 |  | 1h | 2020-07-07 08:00 A | 2020-07-07 09:00 A |  | 100% | 2020-07-07 08:00 | 2020-07-07 09:00 | 1h |  |  | start no earlier than 2020-07-07 08:00 |  | Pam; Karen; Angela; Meredith | 4h | 4h | 245 | 245 | 245 |
| 80 | 6.7 | Sastanci 7 |  | 1h | 2020-07-14 08:00 A | 2020-07-14 09:00 A |  | 100% | 2020-07-14 08:00 | 2020-07-14 09:00 | 1h |  |  | start no earlier than 2020-07-14 08:00 |  | Pam; Karen; Angela; Meredith | 4h | 4h | 245 | 245 | 245 |
| 81 | 6.8 | Sastanci 8 |  | 1h | 2020-07-21 08:00 A | 2020-07-21 09:00 A |  | 100% | 2020-07-21 08:00 | 2020-07-21 09:00 | 1h |  |  | start no earlier than 2020-07-21 08:00 |  | Pam; Karen; Phyllis; Angela | 4h | 4h | 300 | 300 | 300 |
| 82 | 6.9 | Sastanci 9 |  | 1h | 2020-07-28 08:00 A | 2020-07-28 09:00 A |  | 100% | 2020-07-28 08:00 | 2020-07-28 09:00 | 1h |  |  | start no earlier than 2020-07-28 08:00 |  | Pam; Angela; Meredith; Michael | 3.7h | 3.7h | 233 | 233 | 233 |
| 83 | 6.10 | Sastanci 10 |  | 1h | 2020-08-04 08:00 A | 2020-08-04 09:00 A |  | 100% | 2020-08-04 08:00 | 2020-08-04 09:00 | 1h |  |  | start no earlier than 2020-08-04 08:00 |  | Angela; Michael; David | 3h | 3h | 640.5 | 640.5 | 640.5 |

Notes:
- 57: Testiramo aplikaciju na raznim primjerima da bismo provjerili radi li sve ispravno.
- 58: Izvršavamo testiranje za posudbe, vraćanje posudbe, dohvaćanje podataka s različitih kartica ili drugih izvora plaćanja ...
- 59: Testiramo opcije koje korisnik može odabrati kod sortiranja i kategoriziranja (po imenu autora, po žanru, po ocjeni knjige ili časopisa ...)
- 60: Testiramo kako ubaciti nove knjige ili časopise u sustav.
- 61: Završno testiranje aplikacije kao cjeline.
- 62: Ovaj milestone označava da su svi testovi obavljeni, odnosno aplikacija je spremna za kontrolu.
- 63: Kontroliramo projekt i pazimo da se držimo plana (vremenskog, budžetnog ...)
- 64: Pazimo da naša aplikacija zadovolji zahtjeve klijenata i sprječavamo "scope creep". Pokušavamo zadovoljiti neke zahtjeve za promjenama.
- 65: Pazimo da se držimo vremenskog plana i na vrijeme dostavimo aplikaciju krajnjem korisniku.
- 66: Pazimo da se naš proizvod drži svih standara za kvalitetu.
- 67: Pomno pratimo kako rizici utječu na izvršavanje našeg projekta.
- 68: Ovaj milestone označava kraj kontrole, odnosno aplikaciju možemo isporučiti.
- 69: Privodimo projkt kraju.
- 70: Gledamo što smo napravili s ovim projektom i koje smo lekcije naučili.
- 71: Dostavljamo aplikaciju fakultetu i instaliravamo na računala i tablete u knjižnici fakulteta.
- 72: Ovaj milestone označava završetak projekta naše online knjižnice.
